# Biobank2

Schedule from Planner, 2009-05-19 to 2009-11-19.

## Calendars

- Default: Mon-Fri 08:00-12:00, 13:00-17:00; Sat-Sun off.

## Resources

| Resource |
| --- |
| Programmer 1 |
| Programmer 2 |

## Schedule

| ID | WBS | Task | Type | Duration | Start | Finish | Predecessors | Complete | Resources | Work |
| --- | --- | --- | --- | --- | --- | --- | --- | --- | --- | --- |
| 1 | 1 | **Version 1.0** |  |  | 2009-05-19 | 2009-07-30 |  |  |  | 840h |
| 2 | 1.1 | Finish current forms |  |  | 2009-05-19 | 2009-05-25 |  |  | Programmer 1 | 40h |
| 3 | 1.2 | datamatrix decoding library |  |  | 2009-05-26 | 2009-06-08 | 2 |  | Programmer 1 | 80h |
| 4 | 1.3 | Export data from BBPDB and import to Biobank2 |  |  | 2009-06-09 | 2009-06-29 | 3 |  | Programmer 1 | 120h |
| 5 | 1.4 | parse xml for possible servers |  |  | 2009-06-30 | 2009-07-01 | 4 |  | Programmer 1 | 16h |
| 6 | 1.5 | Log out when no activity detected on java client |  |  | 2009-07-02 | 2009-07-02 | 5 |  | Programmer 1 | 8h |
| 7 | 1.6 | cascade settings |  |  | 2009-07-03 | 2009-07-09 | 6 |  | Programmer 1 | 40h |
| 8 | 1.7 | enable logging capability |  |  | 2009-07-10 | 2009-07-16 | 7 |  | Programmer 1 | 40h |
| 9 | 1.8 | Unit and feature test suite |  |  | 2009-07-17 | 2009-07-30 | 8 |  | Programmer 1 | 80h |
| 10 | 1.9 | update button for view forms |  |  | 2009-05-19 | 2009-05-19 |  | 100% | Programmer 2 | 8h |
| 11 | 1.10 | **scanner integration** |  |  | 2009-05-20 | 2009-06-24 |  |  | Programmer 2 | 208h |
| 12 | 1.10.1 | Implement scan link |  |  | 2009-05-20 | 2009-06-02 | 10 | 100% | Programmer 2 | 80h |
| 13 | 1.10.2 | Implement scan process |  |  | 2009-06-03 | 2009-06-09 | 12 | 100% | Programmer 2 | 40h |
| 14 | 1.10.3 | Integrate datamatrix decoding library |  |  | 2009-06-10 | 2009-06-16 | 3, 13 |  | Programmer 2 | 40h |
| 15 | 1.10.4 | 1D barcode scanning |  |  | 2009-06-17 | 2009-06-23 | 14 | 60% | Programmer 2 | 40h |
| 16 | 1.10.5 | hand held scanner integration |  |  | 2009-06-24 | 2009-06-24 | 15 | 100% | Programmer 2 | 8h |
| 17 | 1.11 | java client search feature |  |  | 2009-06-25 | 2009-07-08 | 11 | 10% | Programmer 2 | 80h |
| 18 | 1.12 | java client support for moving containers |  |  | 2009-07-09 | 2009-07-22 | 17 |  |  | 80h |
| 19 | 1.13 | **CSM user authentication** |  |  | 2009-07-23 | 2009-07-29 |  |  | Programmer 2 | 40h |
| 20 | 1.13.1 | user roles |  |  | 2009-07-23 | 2009-07-29 | 18 |  | Programmer 2 | 40h |
| 21 | 2 | Version 1.0 Ready | milestone | 0d | 2009-07-30 | 2009-07-30 | 19, 1 |  |  |  |
| 22 | 3 | **Version 1.1** |  |  | 2009-07-31 | 2009-10-01 | 21 |  |  | 360h |
| 23 | 3.1 | Web client data presentation |  |  | 2009-07-31 | 2009-08-13 |  |  |  | 80h |
| 24 | 3.2 | Web client search |  |  | 2009-08-14 | 2009-08-27 | 23 |  |  | 80h |
| 25 | 3.3 | Model modifications to include orders and distribution |  |  | 2009-08-28 | 2009-09-03 | 24 |  |  | 40h |
| 26 | 3.4 | Web Orders |  |  | 2009-09-04 | 2009-09-10 | 25 |  |  | 40h |
| 27 | 3.5 | Order distribution |  |  | 2009-09-11 | 2009-09-17 | 26 |  |  | 40h |
| 28 | 3.6 | Implement orders and distribution on java client |  |  | 2009-09-18 | 2009-10-01 | 27 |  |  | 80h |
| 29 | 4 | Version 1.1 Ready | milestone | 0d | 2009-10-01 | 2009-10-01 | 22 |  |  |  |

| ID | WBS | Task | Type | Duration | Start | Finish | Predecessors | Work |
| --- | --- | --- | --- | --- | --- | --- | --- | --- |
| 30 | 5 | **Version 2.0** |  |  | 2009-10-02 | 2009-11-19 | 29 | 280h |
| 31 | 5.1 | Model modifications to include shipping |  |  | 2009-10-02 | 2009-10-08 |  | 40h |
| 32 | 5.2 | Shipment processing |  |  | 2009-10-09 | 2009-10-22 | 31 | 80h |
| 33 | 5.3 | Integrate Robot Arm |  |  | 2009-10-23 | 2009-11-05 | 32 | 80h |
| 34 | 5.4 | Integrate Freezer Robot |  |  | 2009-11-06 | 2009-11-19 | 33 | 80h |
| 35 | 6 | Version 2.0 Ready | milestone | 0d | 2009-11-19 | 2009-11-19 | 30 |  |
